# MoCap Project Plan

Schedule from MS Project, 2015-10-26 to 2016-03-10, A marks actual dates.

## Calendars

- Standard: Mon-Fri 08:00-12:00, 13:00-17:00; Sat-Sun off.

## Resources

| Resource |
| --- |
| Christian Sax |
| Fabian Ochsner |
| Christian Sax, Fabian Ochsner |

## Schedule

| ID | WBS | Task | Type | Duration | Start | Finish | Predecessors | Complete | Remaining | Total slack | Free slack | Constraint | Resources | Work | Actual work |
| --- | --- | --- | --- | --- | --- | --- | --- | --- | --- | --- | --- | --- | --- | --- | --- |
| 1 | 1 | **Project preparation** |  | 5d | 2015-10-26 A | 2015-10-30 |  | 99% | 0d |  |  |  |  | 36h | 36h |
| 2 | 1.1 | Documentation template |  | 2d | 2015-10-26 A | 2015-10-27 A |  | 100% |  |  |  | start no earlier than 2015-10-26 | Christian Sax | 16h | 16h |
| 3 | 1.2 | Timesheets |  | 1d | 2015-10-28 A | 2015-10-28 A | 2 | 100% |  |  |  | start no earlier than 2015-10-26 | Christian Sax | 8h | 8h |
| 4 | 1.3 | Proposal |  | 1.5d | 2015-10-29 A | 2015-10-30 A | 3 | 100% |  |  |  | start no earlier than 2015-10-28 | Christian Sax | 12h | 12h |
| 5 | 1.4 | Project Preparation Completed | milestone | 0d | 2015-10-30 | 2015-10-30 | 4 |  |  | 84d | 51d | finish no earlier than 2015-10-30 |  |  |  |
| 6 | 2 | **Requirement Engineering** |  | 71d | 2015-11-02 | 2016-02-08 | 1 |  |  | 23d |  |  |  | 300h |  |
| 7 | 2.1 | Project |  | 1d | 2015-11-26 | 2015-11-26 |  |  |  | 75d |  | start no earlier than 2015-11-26 | Fabian Ochsner | 8h |  |
| 8 | 2.2 | Chat |  | 1.5d | 2015-11-02 | 2015-11-03 |  |  |  | 92.5d |  | start no earlier than 2015-10-26 | Fabian Ochsner | 12h |  |
| 9 | 2.3 | Task |  | 2d | 2015-12-14 | 2015-12-15 |  |  |  | 39.5d | 0d | start no earlier than 2015-12-14 | Christian Sax | 16h |  |
| 10 | 2.4 | Poll |  | 3d | 2015-12-16 | 2015-12-18 | 9 |  |  | 39.5d | 0d | start no earlier than 2015-12-14 | Christian Sax | 24h |  |
| 11 | 2.5 | Logging |  | 1.5d | 2016-01-06 | 2016-01-07 | 10 |  |  | 41.5d | 1.5d | start no earlier than 2016-01-06 | Christian Sax | 12h |  |
| 12 | 2.6 | Accounting |  | 1d | 2015-11-09 | 2015-11-09 |  |  |  | 88d |  | start no earlier than 2015-11-09 | Fabian Ochsner | 8h |  |
| 13 | 2.7 | Reporting |  | 3d | 2016-01-11 | 2016-01-13 |  |  |  | 41d |  | start no earlier than 2016-01-09 |  |  |  |
| 14 | 2.8 | Security |  | 4d | 2016-01-11 | 2016-01-14 | 11 |  |  | 40d |  | start no earlier than 2016-01-09 | Christian Sax | 32h |  |
| 15 | 2.9 | **Backend** |  | 4.5d | 2015-12-21 | 2015-12-25 |  |  |  |  |  |  |  | 36h |  |
| 16 | 2.9.1 | DB Model |  | 2d | 2015-12-21 | 2015-12-22 | 10 |  |  | 39.5d | 0d | start no earlier than 2015-12-16 | Christian Sax | 16h |  |
| 17 | 2.9.2 | Interaction Layer |  | 1.5d | 2015-12-23 | 2015-12-24 | 16 |  |  | 39.5d | 0d | start no earlier than 2015-12-16 | Christian Sax | 12h |  |
| 18 | 2.9.3 | Config Layer |  | 1d | 2015-12-24 | 2015-12-25 | 17 |  |  | 39.5d | 10.5d | start no earlier than 2015-12-16 | Christian Sax | 8h |  |
| 19 | 2.10 | **Webservice** |  | 21d | 2016-01-11 | 2016-02-08 |  |  |  |  |  |  |  | 120h |  |
| 20 | 2.10.1 | Query Specification |  | 4d | 2016-01-11 | 2016-01-14 | 18 |  |  | 29d | 0d | start no earlier than 2016-01-11 | Christian Sax | 32h |  |
| 21 | 2.10.2 | Update Specification |  | 5d | 2016-01-15 | 2016-01-21 | 20 |  |  | 29d | 6d | start no earlier than 2016-01-11 | Christian Sax | 40h |  |
| 22 | 2.10.3 | Update Documentation |  | 6d | 2016-02-01 | 2016-02-08 | 21 |  |  | 23d |  | start no earlier than 2016-02-01 | Christian Sax, Fabian Ochsner | 48h |  |
| 23 | 2.11 | UI Design |  | 4d | 2015-12-24 | 2015-12-29 |  |  |  | 52d |  | start no earlier than 2015-12-24 | Fabian Ochsner | 32h |  |
| 24 | 2.12 | Requirement Engineering Completed |  | 1d | 2016-01-11 | 2016-01-11 |  |  |  | 33d | 0d | start no earlier than 2016-01-09 |  |  |  |

| ID | WBS | Task | Duration | Start | Finish | Predecessors | Total slack | Free slack | Constraint | Resources | Work |
| --- | --- | --- | --- | --- | --- | --- | --- | --- | --- | --- | --- |
| 25 | 3 | **Imlementation** | 43d | 2016-01-12 | 2016-03-10 | 5, 24 | 0d |  |  |  | 304h |
| 26 | 3.1 | Project | 2d | 2016-03-07 | 2016-03-08 |  | 2d |  | start no earlier than 2016-03-07 | Fabian Ochsner | 16h |
| 27 | 3.2 | Chat | 3d | 2016-02-17 | 2016-02-19 |  | 14d |  | start no earlier than 2016-02-17 | Fabian Ochsner | 24h |
| 28 | 3.3 | Task | 3d | 2016-02-01 | 2016-02-03 |  | 26d |  | start no earlier than 2016-02-01 | Christian Sax | 24h |
| 29 | 3.4 | Poll | 4d | 2016-02-12 | 2016-02-17 |  | 16d |  | start no earlier than 2016-02-12 | Christian Sax | 32h |
| 30 | 3.5 | Logging | 4d | 2016-01-12 | 2016-01-15 |  | 39d |  | start no earlier than 2016-01-09 | Christian Sax | 32h |
| 31 | 3.6 | Accounting | 2d | 2016-02-24 | 2016-02-25 |  | 10d |  | start no earlier than 2016-02-24 | Fabian Ochsner | 16h |
| 32 | 3.7 | Reporting | 5d | 2016-01-12 | 2016-01-18 |  | 38d |  | start no earlier than 2016-01-09 |  |  |
| 33 | 3.8 | Security | 6d | 2016-01-18 | 2016-01-25 |  | 33d |  | start no earlier than 2016-01-16 | Christian Sax | 48h |
| 34 | 3.9 | Webservice | 10d | 2016-01-22 | 2016-02-04 |  | 25d |  | start no earlier than 2016-01-22 | Christian Sax | 80h |
| 35 | 3.10 | UI Implementation | 4d | 2016-03-07 | 2016-03-10 |  | 0d |  | start no earlier than 2016-03-07 | Fabian Ochsner | 32h |
| 36 | 3.11 | Implementation Completed | 1d | 2016-02-29 | 2016-02-29 |  | 3d | 0d | start no earlier than 2016-02-29 |  |  |
| 37 | 4 | **Testing** | 5d | 2016-03-01 | 2016-03-07 | 36 | 3d |  |  |  |  |
| 38 | 4.1 | Specify TestCases | 5d | 2016-03-01 | 2016-03-07 |  | 3d |  |  |  |  |
| 39 | 4.2 | Project | 1d | 2016-03-01 | 2016-03-01 |  | 7d |  |  |  |  |
| 40 | 4.3 | Chat | 1.5d | 2016-03-01 | 2016-03-02 |  | 6.5d |  |  |  |  |
| 41 | 4.4 | Task | 1.5d | 2016-03-01 | 2016-03-02 |  | 6.5d |  |  |  |  |
| 42 | 4.5 | Poll | 2d | 2016-03-01 | 2016-03-02 |  | 6d |  |  |  |  |
| 43 | 4.6 | Logging | 1d | 2016-03-01 | 2016-03-01 |  | 7d |  |  |  |  |
| 44 | 4.7 | Accounting | 1d | 2016-03-01 | 2016-03-01 |  | 7d |  |  |  |  |
| 45 | 4.8 | Reporting | 2d | 2016-03-01 | 2016-03-02 |  | 6d |  |  |  |  |
| 46 | 4.9 | Security | 2d | 2016-03-01 | 2016-03-02 |  | 6d |  |  |  |  |
| 47 | 4.10 | Webservice | 5d | 2016-03-01 | 2016-03-07 |  | 3d |  |  |  |  |
| 48 | 4.11 | UI Implementation | 2d | 2016-03-01 | 2016-03-02 |  | 6d |  |  |  |  |
| 49 | 4.12 | Testing Completed | 1d | 2016-03-01 | 2016-03-01 |  | 5d | 0d |  |  |  |

| ID | WBS | Task | Duration | Start | Finish | Predecessors | Total slack |
| --- | --- | --- | --- | --- | --- | --- | --- |
| 50 | 5 | **Follow up** | 2d | 2016-03-02 | 2016-03-03 | 49 | 5d |
| 51 | 5.1 | Prepare official Documents | 2d | 2016-03-02 | 2016-03-03 |  | 5d |
| 52 | 5.2 | Prepare Media | 2d | 2016-03-02 | 2016-03-03 |  | 5d |
| 53 | 5.3 | Handover | 1d | 2016-03-02 | 2016-03-02 |  | 6d |
